# 国家消防救援局项目

Schedule from a web Gantt chart, 2024-04-08 to 2024-04-16.
Saturdays and Sundays are off

## Schedule

| ID | WBS | Task | Duration | Start | Finish | Complete | inPeople |
| --- | --- | --- | --- | --- | --- | --- | --- |
| 2 | 1 | 项目启动 | 1d | 2024-04-08 | 2024-04-08 | 100% | 谷先 |
| 3 | 2 | 产品页面设计 | 7d | 2024-04-08 | 2024-04-16 |  | 万鸣宇 |
| 4 | 3 | 登录页、成员管理、无人机管理、负载管理页面设计 | 1d | 2024-04-08 | 2024-04-08 |  |  |
